# Schedule

Schedule from MS Project, 2014-09-19 to 2015-07-06.
SPecialiST RePack

## Calendars

- Стандартный: Mon-Fri 09:00-13:00, 14:00-18:00; Sat-Sun off.

## Resources

| Resource |
| --- |
| Севастьянов |
| Обычев |
| Казаков |
| ИЦ |

## Schedule

| ID | WBS | Task | Duration | Start | Finish | Predecessors | Total slack | Free slack | Constraint | Resources | Work |
| --- | --- | --- | --- | --- | --- | --- | --- | --- | --- | --- | --- |
| 1 | 1 | **Глобал** | 152d | 2014-09-25 | 2015-04-24 |  | 27d |  |  | Севастьянов | 5852h |
| 2 | 1.1 | **Волгодонск** | 60d | 2014-09-25 | 2014-12-17 |  | 27d |  |  |  |  |
| 3 | 1.1.1 | Тестирование | 18d | 2014-09-25 | 2014-10-20 |  | 179d | 0d | finish no earlier than 2014-10-20 |  |  |
| 4 | 1.1.2 | Пуско-наладка | 4d | 2014-10-21 | 2014-10-24 | 3 | 179d |  | finish no earlier than 2014-10-24 |  |  |
| 5 | 1.1.3 | **Белоярская АЭС** | 28d | 2014-11-10 | 2014-12-17 |  |  |  |  |  |  |
| 6 | 1.1.3.1 | Реализация устройств ШУЗ | 7d | 2014-11-03 | 2014-11-11 |  | 5d | 0d | start no earlier than 2014-11-03 |  |  |
| 7 | 1.1.3.2 | Доработка логики срабатывания | 7d | 2014-11-12 | 2014-11-20 | 6 | 5d | 0d |  |  |  |
| 8 | 1.1.3.3 | Испытания на стенде | 14d | 2014-11-21 | 2014-12-10 | 7 | 5d |  |  |  |  |
| 9 | 1.2 | **Охранная часть** | 30.5d | 2014-11-24 | 2015-01-05 |  |  |  |  | Севастьянов | 580h |
| 10 | 1.2.1 | Сбор требований | 2d | 2014-11-20 | 2014-11-21 |  | 20.5d | 0d | start no earlier than 2014-11-20 | Севастьянов | 16h |
| 11 | 1.2.2 | Реализация | 10d | 2014-11-24 | 2014-12-05 | 10 | 20.5d |  |  | Севастьянов | 80h |
| 12 | 1.2.3 | Сбор стенда. Тестирование и отладка | 30d | 2014-11-19 | 2014-12-30 |  | 132d |  | finish no earlier than 2014-12-30 | ИЦ | 240h |
| 13 | 1.3 | **СКД** | 31.5d | 2014-11-19 | 2015-01-01 |  | 132.5d |  |  | Севастьянов | 2456h |
| 14 | 1.3.1 | Сбор требований | 2d | 2014-11-24 | 2014-11-25 |  | 142d | 0d | start no earlier than 2014-11-24 | Севастьянов | 16h |
| 15 | 1.3.2 | Реализация | 15d | 2014-11-26 | 2014-12-16 | 14 | 142d |  |  | Севастьянов | 120h |
| 16 | 1.3.3 | Сбор стенда. Тестирование и отладка | 30d | 2014-11-19 | 2014-12-30 |  | 132d |  | finish no earlier than 2014-12-30 | ИЦ | 240h |
| 17 | 1.3.4 | **МПТ** | 31.5d | 2014-11-19 | 2015-01-01 |  | 132.5d |  |  | Севастьянов | 1828h |
| 18 | 1.3.4.1 | Сборка стенда | 30d | 2014-11-19 | 2014-12-30 |  | 132d |  | finish no earlier than 2014-12-30 | ИЦ | 240h |
| 19 | 1.3.4.2 | Тестирование и отладка | 30d | 2014-11-19 | 2014-12-30 |  | 132d |  | finish no earlier than 2014-12-30 | Севастьянов | 240h |
| 20 | 1.3.4.3 | **НС** | 30d | 2014-11-19 | 2014-12-30 |  | 134d |  |  | Севастьянов | 720h |
| 21 | 1.3.4.3.1 | Сборка стенда | 30d | 2014-11-19 | 2014-12-30 |  | 132d |  | finish no earlier than 2014-12-30 | ИЦ | 240h |
| 22 | 1.3.4.3.2 | Тестирование и отладка | 30d | 2014-11-19 | 2014-12-30 |  | 132d |  | finish no earlier than 2014-12-30 | Севастьянов | 240h |
| 23 | 1.3.4.4 | **Автономность работы автоматики** | 23.5d | 2014-12-01 | 2015-01-01 |  | 132.5d |  |  | Севастьянов | 376h |
| 24 | 1.3.4.4.1 | Перенос части автоматической логики с ГК на КАУ | 10d | 2014-12-01 | 2014-12-12 |  | 134d | 0d | start no earlier than 2014-12-01 | Казаков | 80h |
| 25 | 1.3.4.4.2 | Тестирование и отладка | 13.5d | 2014-12-15 | 2015-01-01 | 24 | 132.5d |  |  | Казаков | 108h |
| 26 | 1.4 | Реализация взаимодействия всех подсистем | 100d | 2014-12-08 | 2015-04-24 |  | 51d |  | start no earlier than 2014-12-06 | Казаков; Севастьянов | 1600h |

| ID | WBS | Task | Duration | Start | Finish | Predecessors | Total slack | Free slack | Constraint | Resources | Work |
| --- | --- | --- | --- | --- | --- | --- | --- | --- | --- | --- | --- |
| 27 | 2 | **СКД для RVI** | 144d | 2014-09-19 | 2015-04-08 |  | 63d |  |  | Обычев; Севастьянов | 9640h |
| 28 | 2.1 | **Релиз 1** | 67d | 2014-09-19 | 2014-12-22 |  | 140d |  |  | Обычев; Севастьянов | 2144h |
| 29 | 2.1.1 | Реализация минимальных требование на Релиз 1 | 20d | 2014-09-19 | 2014-10-16 |  | 138d | 0d |  | Обычев; Севастьянов | 320h |
| 30 | 2.1.2 | Тестирование и отладка | 20d | 2014-10-17 | 2014-11-13 | 29 | 138d | 0d |  | Обычев; Севастьянов | 320h |
| 31 | 2.1.3 | Интеграция с 1С | 20d | 2014-11-14 | 2014-12-11 | 30 | 138d | 0d |  | Обычев; Севастьянов | 320h |
| 32 | 2.1.4 | Экспорт отчета Т-13 | 7d | 2014-12-12 | 2014-12-22 | 31 | 138d |  |  | Обычев; Севастьянов | 112h |
| 33 | 2.2 | **Релиз 2** | 40d | 2014-12-22 | 2015-02-13 |  | 101d |  |  | Обычев; Севастьянов | 1280h |
| 34 | 2.2.1 | Реализация | 20d | 2014-12-22 | 2015-01-16 |  | 99d | 0d | start no earlier than 2014-12-22 | Обычев; Севастьянов | 320h |
| 35 | 2.2.2 | Тестирование и отладка | 20d | 2015-01-19 | 2015-02-13 | 34 | 99d |  |  | Обычев; Севастьянов | 320h |
| 36 | 2.3 | **Релиз 3** | 40d | 2015-02-12 | 2015-04-08 |  | 63d |  |  | Обычев; Севастьянов | 1280h |
| 37 | 2.3.1 | Реализация | 20d | 2015-02-12 | 2015-03-11 |  | 61d | 0d | start no earlier than 2015-02-12 | Обычев; Севастьянов | 320h |
| 38 | 2.3.2 | Тестирование и отладка | 20d | 2015-03-12 | 2015-04-08 | 37 | 61d |  |  | Обычев; Севастьянов | 320h |
| 39 | 2.4 | **Сценарии управления** | 130d | 2014-09-19 | 2015-03-19 |  | 77d |  |  | Казаков | 2632h |
| 40 | 2.4.1 | Выполнение СУ по событию в журнале | 5d | 2014-09-19 | 2014-09-25 |  | 190d | 0d |  | Казаков | 40h |
| 41 | 2.4.2 | Выполнение СУ по событию по состоянию объект | 5d | 2014-09-26 | 2014-10-02 | 40 | 190d | 0d |  | Казаков | 40h |
| 42 | 2.4.3 | Управление объектами ГК | 5d | 2014-10-03 | 2014-10-09 | 41 | 190d |  |  | Казаков | 40h |
| 43 | 2.4.4 | Управление объектами СКД RVI | 14d | 2014-12-01 | 2014-12-18 |  | 140d |  | start no earlier than 2014-12-01 | Казаков | 112h |
| 44 | 2.4.5 | Сбор требований к типовым сценариям управления | 5d | 2014-10-13 | 2014-10-17 |  | 179d | 0d | start no earlier than 2014-10-11 | Казаков | 40h |
| 45 | 2.4.6 | Разработка документации | 20d | 2014-11-10 | 2014-12-05 |  | 149d |  | start no earlier than 2014-11-10 |  |  |
| 46 | 2.4.7 | Реализация типовых сценариев управления | 5d | 2014-10-20 | 2014-10-24 | 44 | 181d |  |  | Казаков | 40h |
| 47 | 2.4.8 | Сбор стенда для тестирования | 30d | 2014-11-19 | 2014-12-30 |  | 132d |  | finish no earlier than 2014-12-30 | ИЦ | 240h |
| 48 | 2.4.9 | Тестирование и отладка | 20d | 2014-09-29 | 2014-10-24 |  | 179d |  | start no earlier than 2014-09-29 | Казаков | 160h |
| 49 | 2.4.10 | Функции управления коллекциями | 10d | 2014-10-13 | 2014-10-24 |  | 179d |  | start no earlier than 2014-10-11 | Казаков | 80h |
| 50 | 2.4.11 | Развитие номенклатуры функций автоматизации | 100d | 2014-10-31 | 2015-03-19 |  | 75d |  | start no earlier than 2014-10-31 | Казаков | 800h |

| ID | WBS | Task | Duration | Start | Finish | Predecessors | Total slack | Free slack | Constraint | Resources | Work |
| --- | --- | --- | --- | --- | --- | --- | --- | --- | --- | --- | --- |
| 51 | 3 | **Сценарии управления пользовательским интерфейсом** | 207d | 2014-09-19 | 2015-07-06 |  | 0d |  |  | Севастьянов | 6416h |
| 52 | 3.1 | Развитие элементов управления на макетах | 20d | 2014-09-19 | 2014-10-16 |  | 147d | 0d |  | Севастьянов; Казаков | 320h |
| 53 | 3.2 | Публикация свойства элементов управления, которыми можно управлять | 10d | 2014-10-17 | 2014-10-30 | 52 | 147d | 0d |  | Севастьянов; Казаков | 160h |
| 54 | 3.3 | Функции управления элементами интерфейса | 10d | 2014-10-31 | 2014-11-13 | 53 | 147d | 0d |  | Севастьянов; Казаков | 160h |
| 55 | 3.4 | Дочерние окна макетов | 10d | 2014-11-14 | 2014-11-27 | 54 | 147d | 0d |  | Севастьянов; Казаков | 160h |
| 56 | 3.5 | Связывание элементов управления с аргументами процедуры | 10d | 2014-11-28 | 2014-12-11 | 55 | 147d |  |  | Севастьянов; Казаков | 160h |
| 57 | 3.6 | Сбор требований к типовым сценариям управления | 5d | 2014-12-30 | 2015-01-05 |  | 0d |  | start no earlier than 2014-12-30 | Севастьянов; Казаков | 80h |
| 58 | 3.7 | Реализация типовых сценариев управления | 10d | 2015-01-06 | 2015-01-19 | 57 | 0d |  |  | Севастьянов; Казаков | 160h |
| 59 | 3.8 | Тестирование и отладка | 20d | 2015-01-20 | 2015-02-16 | 58 | 0d |  |  | Севастьянов; Казаков | 320h |
| 60 | 3.9 | Развитие номенклатуры элементов управления и функциий | 100d | 2015-02-17 | 2015-07-06 | 59 | 0d |  |  | Севастьянов; Казаков | 1600h |
| 61 | 3.10 | Светлая цветовая гамма интерфейса | 30d | 2014-10-23 | 2014-12-03 |  | 151d |  | start no earlier than 2014-10-23 | Обычев | 240h |
| 62 | 3.11 | **Видео** | 56d | 2014-12-10 | 2015-02-25 |  | 93d |  |  | Казаков; Севастьянов | 1400h |
| 63 | 3.11.1 | Разработка требований к сервису RVI-VSS | 13d | 2014-12-10 | 2014-12-26 |  | 136d |  | start no earlier than 2014-12-10 | Севастьянов | 104h |
| 64 | 3.11.2 | Реализация взаимодействия с RVI-VSS | 20d | 2015-01-15 | 2015-02-11 | 63 | 93d | 0d | start no earlier than 2015-01-15 | Казаков; Севастьянов | 320h |
| 65 | 3.11.3 | Сценарии управления видеоустройствами | 10d | 2015-02-12 | 2015-02-25 | 64 | 93d |  |  | Казаков | 80h |
